# Wohnhaus Arsenal – Ausbau 2. OG

Schedule from Primavera P6, 2026-11-02 to 2026-12-06.

## Resources

| Resource | Group |
| --- | --- |
| Tomasz Nowak | labor |
| Marko Petrović | labor |
| Emre Yılmaz | labor |
| Anna Huber | labor |
| Klaus Berger | labor |
| Stefan Gruber | labor |
| Jana Novak | labor |
| Ivana Kovač | labor |
| Luca Bianchi | labor |

## Schedule

| ID | WBS | Activity | Type | Duration | Start | Finish | Predecessors | Resources | Haltepunkt | Gewerk | Ort | LV-Position |
| --- | --- | --- | --- | --- | --- | --- | --- | --- | --- | --- | --- | --- |
|  | B1 | **Wohnhaus Arsenal** |  |  | 2026-11-02 | 2026-12-06 |  |  |  |  |  |  |
|  | F2 | **2. OG** |  |  | 2026-11-02 | 2026-12-06 |  |  |  |  |  |  |
| F2-DEL-BOARDS |  | Lieferung Gipskartonplatten 2. OG |  | 1d | 2026-11-08 | 2026-11-08 |  | Anna Huber | N | logistics | F2 |  |
| F2-HANDOVER |  | Übergabe 2. OG | milestone | 0d | 2026-12-06 | 2026-12-06 | T5-ELEC-FF, T5-SAN-FF, T5-FLOOR, T6-ELEC-FF, T6-SAN-FF, T6-FLOOR | Anna Huber | N |  | F2 |  |
|  | T5 | **Top 5** |  |  | 2026-11-02 | 2026-12-02 |  |  |  |  |  |  |
| T5-FRAME |  | T5 Ständerwerk Trockenbau |  | 3d | 2026-11-02 | 2026-11-04 |  | Tomasz Nowak | N | drywall | T5 | LG39.01 |
| T5-ELEC-RI |  | T5 Elektro Rohinstallation |  | 3d | 2026-11-05 | 2026-11-07 | T5-FRAME | Marko Petrović | N | electrical | T5 | LG41.02 |
| T5-PLUMB-RI |  | T5 Sanitär Rohinstallation + Vorwand |  | 3d | 2026-11-05 | 2026-11-07 | T5-FRAME | Emre Yılmaz | N | plumbing | T5-BATH | LG42.01 |
| T5-INSP |  | T5 Abnahme Installationen (vor Beplankung) |  | 1d | 2026-11-08 | 2026-11-08 | T5-ELEC-RI, T5-PLUMB-RI | Klaus Berger | Y | inspection | T5 |  |
| T5-BOARD |  | T5 Beplankung + Dämmung |  | 3d | 2026-11-09 | 2026-11-11 | T5-INSP, F2-DEL-BOARDS | Tomasz Nowak | N | drywall | T5 | LG39.02 |
| T5-SCREED |  | T5 Estrich |  | 1d | 2026-11-12 | 2026-11-12 | T5-BOARD | Stefan Gruber | N | screed | T5 | LG11.01 |
| T5-PAINT |  | T5 Malerarbeiten |  | 3d | 2026-11-14 | 2026-11-16 | T5-BOARD FS+2d | Jana Novak | N | painting | T5 | LG45.01 |
| T5-ELEC-FF |  | T5 Elektro Fertiginstallation |  | 1d | 2026-11-17 | 2026-11-17 | T5-PAINT | Marko Petrović | N | electrical | T5 | LG41.05 |
| T5-FLOOR |  | T5 Parkett |  | 2d | 2026-11-27 | 2026-11-28 | T5-SCREED FS+14d, T5-PAINT | Ivana Kovač | N | flooring | T5-LIV | LG32.01 |
| T5-WATERPROOF |  | T5 Abdichtung Bad |  | 1d | 2026-11-27 | 2026-11-27 | T5-SCREED FS+14d | Luca Bianchi | N | tiling | T5-BATH | LG24.01 |
| T5-TILE |  | T5 Fliesen Bad |  | 3d | 2026-11-29 | 2026-12-01 | T5-WATERPROOF FS+1d | Luca Bianchi | N | tiling | T5-BATH | LG24.02 |
| T5-SAN-FF |  | T5 Sanitär Fertigmontage |  | 1d | 2026-12-02 | 2026-12-02 | T5-TILE | Emre Yılmaz | N | plumbing | T5-BATH | LG42.05 |
|  | T6 | **Top 6** |  |  | 2026-11-05 | 2026-12-05 |  |  |  |  |  |  |
| T6-FRAME |  | T6 Ständerwerk Trockenbau |  | 3d | 2026-11-05 | 2026-11-07 | T5-FRAME | Tomasz Nowak | N | drywall | T6 | LG39.01 |
| T6-ELEC-RI |  | T6 Elektro Rohinstallation |  | 3d | 2026-11-08 | 2026-11-10 | T6-FRAME, T5-ELEC-RI | Marko Petrović | N | electrical | T6 | LG41.02 |
| T6-PLUMB-RI |  | T6 Sanitär Rohinstallation + Vorwand |  | 3d | 2026-11-08 | 2026-11-10 | T6-FRAME, T5-PLUMB-RI | Emre Yılmaz | N | plumbing | T6-BATH | LG42.01 |
| T6-INSP |  | T6 Abnahme Installationen (vor Beplankung) |  | 1d | 2026-11-11 | 2026-11-11 | T6-ELEC-RI, T6-PLUMB-RI | Klaus Berger | Y | inspection | T6 |  |
| T6-BOARD |  | T6 Beplankung + Dämmung |  | 3d | 2026-11-12 | 2026-11-14 | T6-INSP, F2-DEL-BOARDS, T5-BOARD | Tomasz Nowak | N | drywall | T6 | LG39.02 |
| T6-SCREED |  | T6 Estrich |  | 1d | 2026-11-15 | 2026-11-15 | T6-BOARD | Stefan Gruber | N | screed | T6 | LG11.01 |
| T6-PAINT |  | T6 Malerarbeiten |  | 3d | 2026-11-17 | 2026-11-19 | T6-BOARD FS+2d | Jana Novak | N | painting | T6 | LG45.01 |
| T6-ELEC-FF |  | T6 Elektro Fertiginstallation |  | 1d | 2026-11-20 | 2026-11-20 | T6-PAINT | Marko Petrović | N | electrical | T6 | LG41.05 |
| T6-FLOOR |  | T6 Parkett |  | 2d | 2026-11-30 | 2026-12-01 | T6-SCREED FS+14d, T6-PAINT | Ivana Kovač | N | flooring | T6-LIV | LG32.01 |
| T6-WATERPROOF |  | T6 Abdichtung Bad |  | 1d | 2026-11-30 | 2026-11-30 | T6-SCREED FS+14d | Luca Bianchi | N | tiling | T6-BATH | LG24.01 |
| T6-TILE |  | T6 Fliesen Bad |  | 3d | 2026-12-02 | 2026-12-04 | T6-WATERPROOF FS+1d | Luca Bianchi | N | tiling | T6-BATH | LG24.02 |
| T6-SAN-FF |  | T6 Sanitär Fertigmontage |  | 1d | 2026-12-05 | 2026-12-05 | T6-TILE | Emre Yılmaz | N | plumbing | T6-BATH | LG42.05 |

## Activity codes

| Code | Value | Meaning |
| --- | --- | --- |
| Ort | F2 | 2. OG |
| Ort | T5 | Top 5 |
| Ort | T5-BATH | Top 5 Bad |
| Ort | T5-LIV | Top 5 Wohnzimmer |
| Ort | T6 | Top 6 |
| Ort | T6-BATH | Top 6 Bad |
| Ort | T6-LIV | Top 6 Wohnzimmer |
