# Wohnhaus Arsenal – Ausbau 2. OG

Schedule from MS Project XML, 2026-11-02 to 2026-12-06.

## Calendars

- 7-Tage-Woche: Mon-Sun 08:00-12:00, 13:00-17:00.

## Resources

| Resource | Group |
| --- | --- |
| Anna Huber | Rhein Bau GmbH |
| Tomasz Nowak | Nowak Trockenbau |
| Marko Petrović | Elektro Petrović |
| Emre Yılmaz | Yılmaz Haustechnik |
| Klaus Berger | ÖBA Berger ZT |
| Stefan Gruber | Gruber Estrich |
| Luca Bianchi | Bianchi Fliesen |
| Jana Novak | Novak Maler |
| Ivana Kovač | Kovač Böden |

## Schedule

| ID | WBS | Task | Type | Duration | Start | Finish | Predecessors | Resources | Ort | KraftSync-ID | Gewerk | LV-Position | Haltepunkt |
| --- | --- | --- | --- | --- | --- | --- | --- | --- | --- | --- | --- | --- | --- |
| 1 | 1 | **Wohnhaus Arsenal** |  |  |  |  |  |  | B1 |  |  |  |  |
| 2 | 1.1 | **2. OG** |  |  |  |  |  |  | F2 |  |  |  |  |
| 3 | 1.1.1 | Lieferung Gipskartonplatten 2. OG |  | 1d | 2026-11-08 | 2026-11-08 |  | Anna Huber | F2 | F2-DEL-BOARDS | logistics |  |  |
| 4 | 1.1.2 | Übergabe 2. OG | milestone | 0d | 2026-12-06 | 2026-12-06 | 13, 17, 14, 26, 30, 27 | Anna Huber | F2 | F2-HANDOVER |  |  |  |
| 5 | 1.1.3 | **Top 5** |  |  |  |  |  |  | T5 |  |  |  |  |
| 6 | 1.1.3.1 | T5 Ständerwerk Trockenbau |  | 3d | 2026-11-02 | 2026-11-04 |  | Tomasz Nowak | T5 | T5-FRAME | drywall | LG39.01 |  |
| 7 | 1.1.3.2 | T5 Elektro Rohinstallation |  | 3d | 2026-11-05 | 2026-11-07 | 6 | Marko Petrović | T5 | T5-ELEC-RI | electrical | LG41.02 |  |
| 8 | 1.1.3.3 | T5 Sanitär Rohinstallation + Vorwand |  | 3d | 2026-11-05 | 2026-11-07 | 6 | Emre Yılmaz | T5-BATH | T5-PLUMB-RI | plumbing | LG42.01 |  |
| 9 | 1.1.3.4 | T5 Abnahme Installationen (vor Beplankung) |  | 1d | 2026-11-08 | 2026-11-08 | 7, 8 | Klaus Berger | T5 | T5-INSP | inspection |  | 1 |
| 10 | 1.1.3.5 | T5 Beplankung + Dämmung |  | 3d | 2026-11-09 | 2026-11-11 | 9, 3 | Tomasz Nowak | T5 | T5-BOARD | drywall | LG39.02 |  |
| 11 | 1.1.3.6 | T5 Estrich |  | 1d | 2026-11-12 | 2026-11-12 | 10 | Stefan Gruber | T5 | T5-SCREED | screed | LG11.01 |  |
| 12 | 1.1.3.7 | T5 Malerarbeiten |  | 3d | 2026-11-14 | 2026-11-16 | 10FS+2ed | Jana Novak | T5 | T5-PAINT | painting | LG45.01 |  |
| 13 | 1.1.3.8 | T5 Elektro Fertiginstallation |  | 1d | 2026-11-17 | 2026-11-17 | 12 | Marko Petrović | T5 | T5-ELEC-FF | electrical | LG41.05 |  |
| 14 | 1.1.3.9 | T5 Parkett |  | 2d | 2026-11-27 | 2026-11-28 | 11FS+14ed, 12 | Ivana Kovač | T5-LIV | T5-FLOOR | flooring | LG32.01 |  |
| 15 | 1.1.3.10 | T5 Abdichtung Bad |  | 1d | 2026-11-27 | 2026-11-27 | 11FS+14ed | Luca Bianchi | T5-BATH | T5-WATERPROOF | tiling | LG24.01 |  |
| 16 | 1.1.3.11 | T5 Fliesen Bad |  | 3d | 2026-11-29 | 2026-12-01 | 15FS+1ed | Luca Bianchi | T5-BATH | T5-TILE | tiling | LG24.02 |  |
| 17 | 1.1.3.12 | T5 Sanitär Fertigmontage |  | 1d | 2026-12-02 | 2026-12-02 | 16 | Emre Yılmaz | T5-BATH | T5-SAN-FF | plumbing | LG42.05 |  |
| 18 | 1.1.4 | **Top 6** |  |  |  |  |  |  | T6 |  |  |  |  |
| 19 | 1.1.4.1 | T6 Ständerwerk Trockenbau |  | 3d | 2026-11-05 | 2026-11-07 | 6 | Tomasz Nowak | T6 | T6-FRAME | drywall | LG39.01 |  |
| 20 | 1.1.4.2 | T6 Elektro Rohinstallation |  | 3d | 2026-11-08 | 2026-11-10 | 19, 7 | Marko Petrović | T6 | T6-ELEC-RI | electrical | LG41.02 |  |
| 21 | 1.1.4.3 | T6 Sanitär Rohinstallation + Vorwand |  | 3d | 2026-11-08 | 2026-11-10 | 19, 8 | Emre Yılmaz | T6-BATH | T6-PLUMB-RI | plumbing | LG42.01 |  |
| 22 | 1.1.4.4 | T6 Abnahme Installationen (vor Beplankung) |  | 1d | 2026-11-11 | 2026-11-11 | 20, 21 | Klaus Berger | T6 | T6-INSP | inspection |  | 1 |
| 23 | 1.1.4.5 | T6 Beplankung + Dämmung |  | 3d | 2026-11-12 | 2026-11-14 | 22, 3, 10 | Tomasz Nowak | T6 | T6-BOARD | drywall | LG39.02 |  |
| 24 | 1.1.4.6 | T6 Estrich |  | 1d | 2026-11-15 | 2026-11-15 | 23 | Stefan Gruber | T6 | T6-SCREED | screed | LG11.01 |  |
| 25 | 1.1.4.7 | T6 Malerarbeiten |  | 3d | 2026-11-17 | 2026-11-19 | 23FS+2ed | Jana Novak | T6 | T6-PAINT | painting | LG45.01 |  |
| 26 | 1.1.4.8 | T6 Elektro Fertiginstallation |  | 1d | 2026-11-20 | 2026-11-20 | 25 | Marko Petrović | T6 | T6-ELEC-FF | electrical | LG41.05 |  |
| 27 | 1.1.4.9 | T6 Parkett |  | 2d | 2026-11-30 | 2026-12-01 | 24FS+14ed, 25 | Ivana Kovač | T6-LIV | T6-FLOOR | flooring | LG32.01 |  |
| 28 | 1.1.4.10 | T6 Abdichtung Bad |  | 1d | 2026-11-30 | 2026-11-30 | 24FS+14ed | Luca Bianchi | T6-BATH | T6-WATERPROOF | tiling | LG24.01 |  |
| 29 | 1.1.4.11 | T6 Fliesen Bad |  | 3d | 2026-12-02 | 2026-12-04 | 28FS+1ed | Luca Bianchi | T6-BATH | T6-TILE | tiling | LG24.02 |  |
| 30 | 1.1.4.12 | T6 Sanitär Fertigmontage |  | 1d | 2026-12-05 | 2026-12-05 | 29 | Emre Yılmaz | T6-BATH | T6-SAN-FF | plumbing | LG42.05 |  |
